# Quantum 2012 Management v0.2 08242012

Schedule from MS Project, 2011-03-01 to 2012-09-14, status date 2012-06-02, 2 hours a day, costs in $, A marks actual dates.

## Calendars

- Standard: Mon-Fri 08:00-12:00, 13:00-17:00; Sat-Sun off. Exceptions (off unless hours are given): 2012-06-02 08:00-12:00, 13:00-17:00.

## Resources

| Resource | Group | Rate |
| --- | --- | --- |
| Quan Nguyen | PM | 10 |
| Dung Vu | TA | 10 |
| Tuan Nguyen | DEV | 3 |
| Dat Nguyen | DEV | 1 |
| Huy | DEV | 1 |
| Duy Anh | DEV | 1 |
| Thuy | DEV | 1 |
| Duy |  |  |

## Schedule

| ID | WBS | Task | Type | Duration | Start | Finish | Predecessors | Complete | Remaining | Total slack | Free slack | Constraint | Resources | Work | Actual work | Cost | Actual cost |
| --- | --- | --- | --- | --- | --- | --- | --- | --- | --- | --- | --- | --- | --- | --- | --- | --- | --- |
| 1 | 1 | **Quantum Desktop Version** |  | 512d? | 2012-03-01 A | 2012-08-24 |  | 36% | 326.65d? | 60d |  |  |  | 356.4h | 103.2h | 2,558.81 | 1,392.8 |
| 2 | 1.1 | **Quantum version 2.0** |  | 62d? | 2012-03-01 A | 2012-03-22 |  | 61% | 24d? | 510d |  |  |  | 159.2h | 87.2h | 1,552.8 | 832.8 |
| 3 | 1.1.1 | Market Summary |  | 28d? | 2012-03-01 A | 2012-03-09 A |  | 100% |  |  |  | finish no earlier than 2012-03-09 | Dung Vu; Tuan Nguyen [10%]; Quan Nguyen [10%] | 67.2h | 67.2h | 632.8 | 632.8 |
| 4 | 1.1.2 | Gán Strategy cho từng Stocks - liên quan đến Alerts |  | 4d? | 2012-03-12 | 2012-03-12 | 3 |  |  | 520d | 0d |  | Quan Nguyen [50%]; Dung Vu | 12h |  | 120 |  |
| 5 | 1.1.3 | Custom Alerts |  | 20d? | 2012-03-13 | 2012-03-19 | 4 |  |  | 520d |  |  | Dung Vu; Quan Nguyen [50%] | 60h |  | 600 |  |
| 6 | 1.1.4 | Vẽ Chart Technical |  | 10d? | 2012-03-20 A | 2012-03-22 A | 5 | 100% |  |  |  |  | Dung Vu | 20h | 20h | 200 | 200 |
| 7 | 1.2 | **Reporting & Email Module** |  | 18.61d? | 2012-06-18 | 2012-06-22 |  |  |  | 241.4d |  |  |  | 99.2h |  | 274.01 |  |
| 8 | 1.2.1 | Analysis |  | 18.61d? | 2012-06-18 | 2012-06-22 |  |  |  | 205.4d |  | start no earlier than 2012-06-18 | Dung Vu [20%]; Quan Nguyen [10%]; Thuy; Duy Anh; Tuan Nguyen [30%] | 16h |  | 85.21 |  |
| 9 | 1.2.2 | Design |  | 4d? | 2012-06-18 | 2012-06-18 |  |  |  | 220d |  | start no earlier than 2012-06-18 | Thuy; Duy Anh; Tuan Nguyen [30%]; Dung Vu [20%]; Quan Nguyen [10%] | 20.8h |  | 47.2 |  |
| 10 | 1.2.3 | Implementation |  | 4d? | 2012-06-18 | 2012-06-18 |  |  |  | 220d |  | start no earlier than 2012-06-18 | Thuy; Duy Anh; Tuan Nguyen [30%]; Dung Vu [20%]; Quan Nguyen [10%] | 20.8h |  | 47.2 |  |
| 11 | 1.2.4 | Testing |  | 4d? | 2012-06-18 | 2012-06-18 |  |  |  | 220d |  | start no earlier than 2012-06-18 | Thuy; Duy Anh; Tuan Nguyen [30%]; Dung Vu [20%]; Quan Nguyen [10%] | 20.8h |  | 47.2 |  |
| 12 | 1.2.5 | Integration |  | 4d? | 2012-06-18 | 2012-06-18 |  |  |  | 220d |  | start no earlier than 2012-06-18 | Thuy; Duy Anh; Tuan Nguyen [30%]; Dung Vu [20%]; Quan Nguyen [10%] | 20.8h |  | 47.2 |  |
| 13 | 1.3 | **Data Module** |  | 40d? | 2012-08-10 A | 2012-08-24 |  | 50% | 20d? | 60d |  |  |  |  |  |  |  |
| 14 | 1.3.1 | Tổng kết về các Website | milestone | 0d? | 2012-08-24 A | 2012-08-24 A |  | 100% |  |  |  | start no earlier than 2012-08-24 |  |  |  |  |  |
| 15 | 1.3.2 | Đọc dữ liệu từ SSI |  | 40d? | 2012-08-10 A | 2012-08-24 |  | 50% | 20d? | 24d |  | finish no earlier than 2012-08-24 |  |  |  |  |  |
| 16 | 1.4 | **Bug fix** |  | 248d? | 2012-06-01 A | 2012-08-24 |  | 19% | 200.44d? | 60d |  |  |  | 86h | 16h | 668 | 560 |
| 17 | 1.4.1 | XP/2003 installation |  | 28d? | 2012-06-01 A | 2012-06-08 |  | 29% | 20d? | 244d |  | start no earlier than 2012-06-01 | Dung Vu | 56h | 16h | 560 | 560 |
| 18 | 1.4.2 | Data Correction for VNIndex |  | 13.71d? | 2012-06-12 | 2012-06-15 |  |  |  | 260d |  | finish no earlier than 2012-06-15 | Dung Vu [9.4%]; Tuan Nguyen | 30h |  | 108 |  |
| 19 | 1.4.3 | Indicators và Chart | milestone | 0d? | 2012-08-24 | 2012-08-24 |  |  |  | 24d |  | start no earlier than 2012-08-24 |  |  |  |  |  |
| 20 | 1.5 | **Optimization** |  | 4d? | 2012-06-06 | 2012-06-06 |  |  |  | 288d |  |  |  | 12h |  | 64 |  |
| 21 | 1.5.1 | Webservices connexion |  | 4d? | 2012-06-06 | 2012-06-06 |  |  |  | 288d |  | start no earlier than 2012-06-06 | Dung Vu [50%]; Tuan Nguyen | 12h |  | 64 |  |
| 22 | 2 | **Documentation** |  | 1564d? | 2011-03-01 A | 2012-08-27 |  |  | 1564d? | 56d |  |  |  |  |  |  |  |
| 23 | 2.1 | Quantum Requirement Desktop |  | 64d | 2012-08-06 | 2012-08-27 |  |  |  | 56d |  | start no earlier than 2012-08-03 |  |  |  |  |  |
| 24 | 2.2 | Quantum Admin |  | 1d? | 2011-03-01 | 2011-03-01 |  |  |  | 1619d |  |  |  |  |  |  |  |
| 25 | 2.3 | Quantum Database |  | 1d? | 2011-03-01 | 2011-03-01 |  |  |  | 1619d |  |  |  |  |  |  |  |
| 26 | 2.4 | Quantum Architecture |  | 1d? | 2011-03-01 | 2011-03-01 |  |  |  | 1619d |  |  |  |  |  |  |  |
| 27 | 2.5 | Quantum User Guide Tieng Viet |  | 1d? | 2011-03-01 | 2011-03-01 |  |  |  | 1619d |  |  |  |  |  |  |  |
| 28 | 2.6 | Quantum User Guide English | milestone | 0d? | 2012-08-24 A | 2012-08-24 A |  | 100% |  |  |  | start no earlier than 2012-08-24 |  |  |  |  |  |

| ID | WBS | Task | Type | Duration | Start | Finish | Predecessors | Complete | Remaining | Total slack | Constraint | Resources | Work | Actual work | Cost | Actual cost |
| --- | --- | --- | --- | --- | --- | --- | --- | --- | --- | --- | --- | --- | --- | --- | --- | --- |
| 29 | 3 | **Quantum Web** |  | 480d? | 2012-04-03 A | 2012-09-14 |  | 8% | 444d? | 0d |  |  | 1536h | 115.2h | 4,416 | 4,416 |
| 30 | 3.1 | Web design by inside team |  | 480d? | 2012-04-03 A | 2012-09-14 |  | 8% | 444d? | 0d | finish no earlier than 2012-09-14 | Duy; Dung Vu [20%]; Tuan Nguyen [20%]; Quan Nguyen [20%] | 1536h | 115.2h | 4,416 | 4,416 |
| 31 | 3.2 | Web approved by PM | milestone | 0d | 2012-09-14 | 2012-09-14 | 30 |  |  | 0d | start no earlier than 2012-06-06 |  |  |  |  |  |
| 32 | 4 | **Quantum Mobile (iOS, Android)** |  | 4d? | 2012-09-03 | 2012-09-03 |  |  |  | 36d |  |  |  |  |  |  |
| 33 | 4.1 | I phone draft design |  | 4d? | 2012-09-03 | 2012-09-03 |  |  |  | 36d | start no earlier than 2012-09-03 |  |  |  |  |  |
| 34 | 4.2 | I phone approved by PM |  | 4d? | 2012-09-03 | 2012-09-03 |  |  |  | 36d | start no earlier than 2012-09-03 |  |  |  |  |  |
